How a schedule from an exported table changed from version to version. A marks actual dates.

## Version 1 (saved 2026-10-19)

Note of the change: Sync the WBS with the contest sheet: real dates, English text, T6 ids

| Task | Start | Finish |
| --- | --- | --- |
| Delivery: web version and Android APK | Oct 15, 2026 | Oct 26, 2026 |
| Asset paths via BASE_URL | Oct 15, 2026 | Oct 15, 2026 |
| Deploy to GitHub Pages | Oct 15, 2026 | Oct 15, 2026 |
| PWA and offline mode in the web version | Oct 15, 2026 | Oct 21, 2026 |
| Build the current APK and control its size | Oct 15, 2026 | Oct 16, 2026 |
| Check the APK on a real phone | Oct 23, 2026 | Oct 26, 2026 |
| Publish the APK as a GitHub Release | Oct 15, 2026 | Oct 16, 2026 |
| Sound, voice-over and story | Oct 16, 2026 | Nov 3, 2026 |
| Duck music under voice | Oct 16, 2026 | Oct 16, 2026 |
| Interface click sounds | Oct 16, 2026 | Oct 16, 2026 |
| Voice lines with attempt numbers | Oct 16, 2026 | Oct 16, 2026 |
| Recast voices after feedback | Nov 2, 2026 | Nov 3, 2026 |
| Story achievements | Oct 16, 2026 | Oct 16, 2026 |
| Shelter lines after endings | Oct 16, 2026 | Oct 16, 2026 |
| Location boss portraits | Oct 16, 2026 | Oct 16, 2026 |
| Balance, quality and engineering | Oct 16, 2026 | Nov 18, 2026 |
| Three full playthroughs with a log | Nov 11, 2026 | Nov 12, 2026 |
| Balance fixes from the log | Nov 13, 2026 | Nov 16, 2026 |
| Accessibility check | Nov 17, 2026 | Nov 18, 2026 |
| CI on GitHub Actions | Oct 16, 2026 | Oct 16, 2026 |
| Repository cleanup | Oct 16, 2026 | Oct 16, 2026 |
| Bundle splitting | Oct 16, 2026 | Oct 16, 2026 |
| Documentation and release 1.0 | Oct 16, 2026 | Nov 30, 2026 |
| Technical documentation and architecture | Oct 16, 2026 | Oct 16, 2026 |
| README: run and build in 10 minutes | Oct 16, 2026 | Oct 16, 2026 |
| Player guide (PDF) | Nov 26, 2026 | Nov 26, 2026 |
| Feature freeze and release candidate | Nov 27, 2026 | Nov 27, 2026 |
| Final regression and the v1.0.0 tag | Nov 30, 2026 | Nov 30, 2026 |
| Cross-testing and defense | Dec 1, 2026 | Dec 15, 2026 |
| Test cases for cross-testing | Dec 1, 2026 | Dec 2, 2026 |
| Cross-test other teams projects | Dec 3, 2026 | Dec 9, 2026 |
| Fixes after cross-testing | Dec 10, 2026 | Dec 11, 2026 |
| Presentation and demo for the defense | Dec 14, 2026 | Dec 15, 2026 |

## Version 2 (saved 2026-10-19)

Note of the change: Add the roadmap to December 15; honest hours for finished tasks, three planned tasks, a realistic schedule

Added:

| Task | Start | Finish |
| --- | --- | --- |
| Playtest round with classmates | Oct 26, 2026 | Nov 3, 2026 |
| Performance check on a low-end Android phone | Oct 28, 2026 | Oct 29, 2026 |
| Fixes from the playtest feedback | Nov 4, 2026 | Nov 6, 2026 |

Changed:

| Task | Start | Finish |
| --- | --- | --- |
| Delivery: web version and Android APK |  | Oct 26, 2026 → Oct 23, 2026 |
| PWA and offline mode in the web version |  | Oct 21, 2026 → Oct 20, 2026 |
| Check the APK on a real phone | Oct 23, 2026 → Oct 21, 2026 | Oct 26, 2026 → Oct 23, 2026 |
| Sound, voice-over and story |  | Nov 3, 2026 → Oct 29, 2026 |
| Recast voices after feedback | Nov 2, 2026 → Oct 27, 2026 | Nov 3, 2026 → Oct 29, 2026 |
| Three full playthroughs with a log | Nov 11, 2026 → Nov 9, 2026 | Nov 12, 2026 → Nov 11, 2026 |
| Balance fixes from the log | Nov 13, 2026 → Nov 12, 2026 |  |
| Documentation and release 1.0 |  | Nov 30, 2026 → Nov 27, 2026 |
| Player guide (PDF) | Nov 26, 2026 → Nov 18, 2026 | Nov 26, 2026 → Nov 20, 2026 |
| Feature freeze and release candidate | Nov 27, 2026 → Nov 23, 2026 | Nov 27, 2026 → Nov 24, 2026 |
| Final regression and the v1.0.0 tag | Nov 30, 2026 → Nov 25, 2026 | Nov 30, 2026 → Nov 27, 2026 |
| Presentation and demo for the defense | Dec 14, 2026 → Dec 11, 2026 |  |

## Version 3 (saved 2026-10-21)

Note of the change: WBS docs: remove the APK size limit and portrait size budget from acceptance criteria and risks

Added:

| Task | Start | Finish |
| --- | --- | --- |
| Build the current APK and check it | Oct 15, 2026 | Oct 16, 2026 |

Removed: Build the current APK and control its size
