How a schedule from an exported table changed from version to version. A marks actual dates.

## Version 1 (saved 2026-10-15)

Note of the change: Add WBS for the project contest and link it from the README

| Task | Start | Finish |
| --- | --- | --- |
| Веб-версія в браузері | Oct 19, 2026 | Oct 21, 2026 |
| Шляхи ресурсів через BASE_URL | Oct 19, 2026 | Oct 19, 2026 |
| Деплой на GitHub Pages | Oct 20, 2026 | Oct 20, 2026 |
| PWA та офлайн у веб-версії | Oct 21, 2026 | Oct 21, 2026 |
| Android APK (обов’язкова умова) | Oct 22, 2026 | Oct 26, 2026 |
| Збірка APK 0.12 і контроль розміру | Oct 22, 2026 | Oct 22, 2026 |
| Перевірка APK на реальному телефоні | Oct 23, 2026 | Oct 26, 2026 |
| Публікація APK як GitHub Release | Oct 26, 2026 | Oct 26, 2026 |
| Звук і озвучка | Oct 27, 2026 | Nov 3, 2026 |
| Приглушення музики під голос | Oct 27, 2026 | Oct 27, 2026 |
| Звуки інтерфейсу | Oct 28, 2026 | Oct 28, 2026 |
| Озвучка реплік з номером спроби | Oct 29, 2026 | Oct 30, 2026 |
| Перекаст голосів за відгуком | Nov 2, 2026 | Nov 3, 2026 |
| Сюжет і досягнення | Nov 4, 2026 | Nov 10, 2026 |
| Досягнення за сюжет | Nov 4, 2026 | Nov 4, 2026 |
| Репліки Притулку після кінцівок | Nov 5, 2026 | Nov 6, 2026 |
| Портрети босів локацій | Nov 9, 2026 | Nov 10, 2026 |
| Баланс і якість гри | Nov 11, 2026 | Nov 18, 2026 |
| Три повні проходи з журналом | Nov 11, 2026 | Nov 12, 2026 |
| Виправлення знахідок балансу | Nov 13, 2026 | Nov 16, 2026 |
| Перевірка доступності | Nov 17, 2026 | Nov 18, 2026 |
| Інженерія та підтримка | Nov 19, 2026 | Nov 24, 2026 |
| CI у GitHub Actions | Nov 19, 2026 | Nov 19, 2026 |
| Очищення репозиторію і залежностей | Nov 20, 2026 | Nov 20, 2026 |
| Розбиття бандла | Nov 23, 2026 | Nov 24, 2026 |
| Реліз 1.0, крос-тестування і захист | Nov 25, 2026 | Dec 15, 2026 |
| Заморожування функцій і release candidate | Nov 25, 2026 | Nov 26, 2026 |
| Фінальна регресія і тег v1.0.0 | Nov 27, 2026 | Nov 30, 2026 |
| Тест-кейси для крос-тестування | Dec 1, 2026 | Dec 2, 2026 |
| Крос-тест проєктів інших команд | Dec 3, 2026 | Dec 9, 2026 |
| Виправлення за результатами крос-тесту | Dec 10, 2026 | Dec 11, 2026 |
| Презентація та демо для захисту | Dec 14, 2026 | Dec 15, 2026 |

## Version 2 (saved 2026-10-15)

Note of the change: Serve the game under a sub-path for GitHub Pages; regroup the WBS into five epics

Added:

| Task | Start | Finish |
| --- | --- | --- |
| Доставка: веб-версія та Android APK | Oct 19, 2026 | Oct 26, 2026 |
| Звук, озвучка та сюжет | Oct 27, 2026 | Nov 10, 2026 |
| Баланс, якість та інженерія | Nov 11, 2026 | Nov 24, 2026 |
| Документація та реліз 1.0 | Nov 24, 2026 | Nov 30, 2026 |
| Технічна документація й архітектура | Nov 24, 2026 | Nov 25, 2026 |
| README: запуск і збірка за 10 хвилин | Nov 25, 2026 | Nov 25, 2026 |
| Посібник гравця (PDF) | Nov 26, 2026 | Nov 26, 2026 |
| Крос-тестування та захист | Dec 1, 2026 | Dec 15, 2026 |

Removed: Веб-версія в браузері; Android APK (обов’язкова умова); Звук і озвучка; Сюжет і досягнення; Баланс і якість гри; Інженерія та підтримка; Реліз 1.0, крос-тестування і захист

Changed:

| Task | Start | Finish |
| --- | --- | --- |
| Заморожування функцій і release candidate | Nov 25, 2026 → Nov 27, 2026 | Nov 26, 2026 → Nov 27, 2026 |
| Фінальна регресія і тег v1.0.0 | Nov 27, 2026 → Nov 30, 2026 |  |

## Version 3 (saved 2026-10-15)

Note of the change: Mark the web, APK build and release tasks done in the WBS

Added:

| Task | Start | Finish |
| --- | --- | --- |
| Збірка актуального APK і контроль розміру | Oct 22, 2026 | Oct 22, 2026 |

Removed: Збірка APK 0.12 і контроль розміру
